# Healthcare system Gantt chart

Schedule from MS Project, 2017-06-01 to 2018-11-29.

## Calendars

- Standard: Mon-Fri 08:00-12:00, 13:00-17:00; Sat-Sun off.

## Resources

| Resource |
| --- |
| Achal Patel |
| Kishankumar Patel |
| Tom George |
| Nathan H. |
| Bill T. |
| Aidan Doyle |
| John Davis |
| Aaron Garcia |
| Amber Cole |
| Peter Smith |
| Bryan L. |
| Tim Wilson |
| John Eldred |
| George Benson |
| Ben Taylor |
| Brian Martinez |
| Dilip Sharma |
| Karan P. |
| Neville C. |
| Brandon K. |
| Caleb Boyle |
| Tyler Will |
| Oscar Weis |
| Justin Hulbert |
| Jeremy Hulbert |

## Schedule

| ID | WBS | Task | Type | Duration | Start | Finish | Predecessors | Total slack | Free slack | Constraint | Resources | Work |
| --- | --- | --- | --- | --- | --- | --- | --- | --- | --- | --- | --- | --- |
| 1 | 1 | **Project plan creation and documentation** |  | 33d | 2017-06-01 | 2017-07-17 |  | 3d |  |  |  | 256h |
| 2 | 1.1 | Project charter |  | 2d | 2017-06-01 | 2017-06-02 |  | 235.5d |  | start no earlier than 2017-06-01 | Achal Patel | 16h |
| 3 | 1.2 | Kickoff Meeting |  | 1d | 2017-06-05 | 2017-06-05 |  | 234.5d |  | start no earlier than 2017-06-05 | Achal Patel | 8h |
| 4 | 1.3 | Requirements discussion & planning | manual | 7d | 2017-06-06 | 2017-06-14 |  |  |  | start no earlier than 2017-06-06 | Achal Patel | 56h |
| 5 | 1.4 | Planning the scope of the project |  | 2d | 2017-06-15 | 2017-06-19 | 4 | 196.5d |  |  | Achal Patel | 16h |
| 6 | 1.5 | Design project architecture |  | 2d | 2017-06-20 | 2017-06-21 |  | 204.5d | 0d | start no earlier than 2017-06-20 | Kishankumar Patel | 16h |
| 7 | 1.6 | Project management plan |  | 6d | 2017-06-22 | 2017-06-29 | 6 | 204.5d | 0d |  | Achal Patel | 48h |
| 8 | 1.7 | Constructing WBS |  | 5d | 2017-06-30 | 2017-07-06 | 7 | 176d | 0d |  | Achal Patel | 40h |
| 9 | 1.8 | Constructing WBS Dictionary |  | 2d | 2017-07-07 | 2017-07-10 | 8 | 176d | 0d |  | Achal Patel | 16h |
| 10 | 1.9 | Constructing the gantt chart |  | 1d | 2017-07-11 | 2017-07-11 | 9 | 176d | 0d |  | Achal Patel | 8h |
| 11 | 1.10 | Test plan documentation |  | 4d | 2017-07-12 | 2017-07-17 | 10 | 176d | 0d |  | Tom George | 32h |
| 12 | 1.11 | Milestone: Initial phase completed | milestone | 0d | 2017-07-17 | 2017-07-17 | 11 | 176d |  |  |  |  |
| 14 | 2 | **Project design** |  | 25d | 2017-07-24 | 2017-08-25 |  |  |  |  |  | 200h |
| 15 | 2.1 | Design project architecture |  | 15d | 2017-07-24 | 2017-08-11 |  | 0d |  | start no earlier than 2017-07-24 | Kishankumar Patel | 120h |
| 16 | 2.2 | Database schema design |  | 10d | 2017-08-14 | 2017-08-25 | 15 | 0d |  |  | Bill T. | 80h |
| 17 | 3 | **Design and development** |  | 222d | 2017-08-28 | 2018-07-03 |  | 5d |  |  |  | 2568h |
| 18 | 3.1 | Server Setup |  | 3d | 2017-08-28 | 2017-08-30 | 16 | 324d | 0d |  | Nathan H. | 24h |
| 19 | 3.2 | Database setup |  | 2d | 2017-08-31 | 2017-09-01 | 18 | 324d |  |  | Nathan H. | 16h |
| 20 | 3.3 | **Implementation** |  | 217d | 2017-09-04 | 2018-07-03 |  |  |  |  |  | 2528h |
| 21 | 3.3.1 | Create project based on MVC |  | 1d | 2017-09-04 | 2017-09-04 |  | 20.5d | 0d |  | Brandon K. | 8h |
| 22 | 3.3.2 | Use MOQ libraries to write unit test |  | 1d | 2017-09-05 | 2017-09-05 | 21 | 20.5d | 0d |  | Caleb Boyle | 8h |
| 23 | 3.3.3 | Include a neat Bootstrapper template for the website |  | 1d | 2017-09-06 | 2017-09-06 | 22 | 20.5d | 0d |  | Tyler Will | 8h |
| 24 | 3.3.4 | Create a Layout page shared across various controllers and views |  | 1d | 2017-09-07 | 2017-09-07 | 23 | 20.5d | 0d |  | Oscar Weis | 8h |
| 25 | 3.3.5 | Implement a top level AppController |  | 1d | 2017-09-08 | 2017-09-08 | 24 | 20.5d | 0d |  | Justin Hulbert; Peter Smith | 16h |
| 26 | 3.3.6 | Configure services for logging in debug and production environment |  | 2d | 2017-09-11 | 2017-09-12 | 25 | 20.5d | 0d |  | Jeremy Hulbert; John Eldred | 32h |

| ID | WBS | Task | Duration | Start | Finish | Predecessors | Total slack | Free slack | Resources | Work |
| --- | --- | --- | --- | --- | --- | --- | --- | --- | --- | --- |
| 27 | 3.3.7 | **Include Entity Framework Core 1.0** | 11.5d | 2017-09-13 | 2017-09-28 |  | 20.5d |  |  | 136h |
| 28 | 3.3.7.1 | Create Entities, DbContext and use migrations | 2d | 2017-09-13 | 2017-09-14 | 26 | 20.5d | 0d | Jeremy Hulbert; Peter Smith | 32h |
| 29 | 3.3.7.2 | Seed the Database | 0.5d | 2017-09-15 | 2017-09-15 | 28 | 20.5d | 0d | Justin Hulbert; George Benson | 8h |
| 30 | 3.3.7.3 | Implement Repository pattern | 1d | 2017-09-15 | 2017-09-18 | 29 | 20.5d | 0d | Tyler Will | 8h |
| 31 | 3.3.7.4 | Add support for logging in the repository | 3d | 2017-09-18 | 2017-09-21 | 30 | 20.5d | 0d | Brandon K.; Aaron Garcia | 48h |
| 32 | 3.3.7.5 | Automation testing: Write unit test code to test all methods in the data access layer | 5d | 2017-09-21 | 2017-09-28 | 31 | 20.5d | 0d | Caleb Boyle | 40h |
| 33 | 3.3.8 | **Doctor Information services** | 41d | 2017-09-28 | 2017-11-24 |  | 20.5d |  |  | 432h |
| 34 | 3.3.8.1 | Implement controller for Doctor information services | 2d | 2017-09-28 | 2017-10-02 | 32 | 20.5d | 0d | Jeremy Hulbert | 16h |
| 35 | 3.3.8.2 | Create DoctorViewModel | 2d | 2017-10-02 | 2017-10-04 | 34 | 20.5d | 0d | Justin Hulbert | 16h |
| 36 | 3.3.8.3 | Cerate PatientViewModel | 2d | 2017-10-04 | 2017-10-06 | 35 | 20.5d | 0d | Oscar Weis | 16h |
| 37 | 3.3.8.4 | Home page | 2d | 2017-10-06 | 2017-10-10 | 36 | 20.5d | 0d | Aidan Doyle | 16h |
| 38 | 3.3.8.5 | Appointments page | 5d | 2017-10-10 | 2017-10-17 | 37 | 20.5d | 0d | John Davis | 40h |
| 39 | 3.3.8.6 | Patient record page | 5d | 2017-10-17 | 2017-10-24 | 38 | 20.5d | 0d | Aaron Garcia; Peter Smith | 80h |
| 40 | 3.3.8.7 | Entity framework: Implement the CRUD functionality | 5d | 2017-10-24 | 2017-10-31 | 39 | 20.5d | 0d | Brandon K.; Aidan Doyle | 80h |
| 41 | 3.3.8.8 | Entity framework: Handle concurrency issues | 3d | 2017-10-31 | 2017-11-03 | 40 | 20.5d | 0d | Caleb Boyle; Peter Smith | 48h |
| 42 | 3.3.8.9 | Add sorting, filtering functionality | 2d | 2017-11-03 | 2017-11-07 | 41 | 20.5d | 0d | Tyler Will | 16h |
| 43 | 3.3.8.10 | Add validation to the doctor model | 2d | 2017-11-07 | 2017-11-09 | 42 | 20.5d | 0d | Bryan L. | 16h |
| 44 | 3.3.8.11 | Add validation to the patient model | 2d | 2017-11-09 | 2017-11-13 | 43 | 20.5d | 0d | John Eldred | 16h |
| 45 | 3.3.8.12 | Automation testing: Use MOQ to write code to test all controllers. | 5d | 2017-11-13 | 2017-11-20 | 44 | 20.5d | 0d | Tim Wilson | 40h |
| 46 | 3.3.8.13 | Add search functionality | 2d | 2017-11-20 | 2017-11-22 | 45 | 20.5d | 0d | Amber Cole | 16h |
| 47 | 3.3.8.14 | Add support for logging | 2d | 2017-11-22 | 2017-11-24 | 46 | 20.5d | 0d | Aidan Doyle | 16h |
| 48 | 3.3.9 | **Patient Information Services** | 34d | 2017-11-24 | 2018-01-11 | 47 | 20.5d |  |  | 336h |
| 49 | 3.3.9.1 | Implement controller for Patient infromation services | 2d | 2017-11-24 | 2017-11-28 | 47 | 20.5d | 0d | Jeremy Hulbert | 16h |
| 50 | 3.3.9.2 | Create Equipment viewmodel | 2d | 2017-11-28 | 2017-11-30 | 49 | 20.5d | 0d | Justin Hulbert | 16h |
| 51 | 3.3.9.3 | Create viewmodel fro bills | 2d | 2017-11-30 | 2017-12-04 | 50 | 20.5d | 0d | Oscar Weis | 16h |
| 52 | 3.3.9.4 | Home page | 2d | 2017-12-04 | 2017-12-06 | 51 | 20.5d | 0d | Amber Cole; Peter Smith | 32h |
| 53 | 3.3.9.5 | Appointments page | 2d | 2017-12-06 | 2017-12-08 | 52 | 20.5d | 0d | John Davis; Bryan L. | 32h |
| 54 | 3.3.9.6 | View health records | 2d | 2017-12-08 | 2017-12-12 | 53 | 20.5d | 0d | Aaron Garcia; Tim Wilson | 32h |
| 55 | 3.3.9.7 | Available equipments | 2d | 2017-12-12 | 2017-12-14 | 54 | 20.5d | 0d | John Davis; John Eldred | 32h |
| 56 | 3.3.9.8 | Bill statements | 1d | 2017-12-14 | 2017-12-15 | 55 | 20.5d | 0d | George Benson | 8h |
| 57 | 3.3.9.9 | Entity framework: Implement the CRUD functionality | 5d | 2017-12-15 | 2017-12-22 | 56 | 20.5d | 0d | Brandon K. | 40h |
| 58 | 3.3.9.10 | Add sorting, filtering functionality | 2d | 2017-12-22 | 2017-12-26 | 57 | 20.5d | 0d | Caleb Boyle | 16h |
| 59 | 3.3.9.11 | Entity framework: Handle concurrency issues | 3d | 2017-12-26 | 2017-12-29 | 58 | 20.5d | 0d | Tyler Will | 24h |
| 60 | 3.3.9.12 | Automation testing: Use MOQ to write code to test all controllers. | 5d | 2017-12-29 | 2018-01-05 | 59 | 20.5d | 0d | Bryan L. | 40h |
| 61 | 3.3.9.13 | Add search functionality | 2d | 2018-01-05 | 2018-01-09 | 60 | 20.5d | 0d | John Eldred | 16h |
| 62 | 3.3.9.14 | Add support for logging | 2d | 2018-01-09 | 2018-01-11 | 61 | 20.5d | 0d | Tim Wilson | 16h |

| ID | WBS | Task | Type | Duration | Start | Finish | Predecessors | Total slack | Free slack | Resources | Work |
| --- | --- | --- | --- | --- | --- | --- | --- | --- | --- | --- | --- |
| 63 | 3.3.10 | **Staff Information Services** |  | 45d | 2018-01-11 | 2018-03-15 |  | 20.5d |  |  | 400h |
| 64 | 3.3.10.1 | Implement controller for Staff infromation services |  | 2d | 2018-01-11 | 2018-01-15 | 62 | 20.5d | 0d | Jeremy Hulbert | 16h |
| 65 | 3.3.10.2 | Home page |  | 2d | 2018-01-15 | 2018-01-17 | 64 | 20.5d | 0d | Amber Cole | 16h |
| 66 | 3.3.10.3 | Appointments page |  | 5d | 2018-01-17 | 2018-01-24 | 65 | 20.5d | 0d | Kishankumar Patel | 40h |
| 67 | 3.3.10.4 | View health records |  | 5d | 2018-01-24 | 2018-01-31 | 66 | 20.5d | 0d | Aaron Garcia; Tim Wilson | 80h |
| 68 | 3.3.10.5 | Resource availability |  | 5d | 2018-01-31 | 2018-02-07 | 67 | 20.5d | 0d | John Davis | 40h |
| 69 | 3.3.10.6 | Billing transactions |  | 5d | 2018-02-07 | 2018-02-14 | 68 | 20.5d | 0d | Nathan H. | 40h |
| 70 | 3.3.10.7 | Entity framework: Implement the CRUD functionality |  | 5d | 2018-02-14 | 2018-02-21 | 69 | 78.5d | 0d | Brandon K. | 40h |
| 71 | 3.3.10.8 | Add sorting, filtering functionality |  | 2d | 2018-02-21 | 2018-02-23 | 70 | 78.5d | 0d | Caleb Boyle | 16h |
| 72 | 3.3.10.9 | Entity framework: Handle concurrency issues |  | 3d | 2018-02-23 | 2018-02-28 | 71 | 78.5d | 0d | Tyler Will | 24h |
| 73 | 3.3.10.10 | Automation testing: Use MOQ to write code to test all controllers. |  | 5d | 2018-02-28 | 2018-03-07 | 72 | 78.5d | 0d | Bryan L. | 40h |
| 74 | 3.3.10.11 | Add validation to models |  | 2d | 2018-03-07 | 2018-03-09 | 73 | 78.5d | 0d | John Eldred | 16h |
| 75 | 3.3.10.12 | Add search functionality |  | 2d | 2018-03-09 | 2018-03-13 | 74 | 78.5d | 0d | Tim Wilson | 16h |
| 76 | 3.3.10.13 | Add support for logging |  | 2d | 2018-03-13 | 2018-03-15 | 75 | 78.5d |  | Justin Hulbert | 16h |
| 77 | 3.3.11 | **Resource Information Services** |  | 29d | 2018-03-15 | 2018-04-24 |  |  |  |  | 264h |
| 78 | 3.3.11.1 | Implement controller for resources information services |  | 2d | 2018-03-15 | 2018-03-16 |  | 27d |  | Jeremy Hulbert | 16h |
| 79 | 3.3.11.2 | Create viewmodels for the resource. |  | 2d | 2018-03-15 | 2018-03-16 | 69 | 0d |  | Amber Cole | 16h |
| 80 | 3.3.11.3 | Resource page |  | 2d | 2018-03-19 | 2018-03-20 | 79 | 0d |  | Kishankumar Patel | 16h |
| 81 | 3.3.11.4 | Order page |  | 2d | 2018-03-21 | 2018-03-22 | 80 | 0d |  | John Eldred | 16h |
| 82 | 3.3.11.5 | Billing transactions |  | 2d | 2018-03-23 | 2018-03-26 | 81 | 0d |  | Aidan Doyle; George Benson | 32h |
| 83 | 3.3.11.6 | Entity framework: Implement the CRUD functionality |  | 5d | 2018-03-27 | 2018-04-02 | 82 | 0d |  | Brandon K. | 40h |
| 84 | 3.3.11.7 | Add sorting, filtering functionality |  | 2d | 2018-04-03 | 2018-04-04 | 83 | 0d |  | Caleb Boyle | 16h |
| 85 | 3.3.11.8 | Add validation to the resource model |  | 2d | 2018-04-05 | 2018-04-06 | 84 | 0d |  | Tyler Will | 16h |
| 86 | 3.3.11.9 | Automation testing: Use MOQ to write code to test all controllers. |  | 5d | 2018-04-09 | 2018-04-13 | 85 | 0d |  | Bryan L. | 40h |
| 87 | 3.3.11.10 | Entity framework: Handle concurrency issues |  | 3d | 2018-04-16 | 2018-04-18 | 86 | 0d |  | John Eldred | 24h |
| 88 | 3.3.11.11 | Add search functionality |  | 2d | 2018-04-19 | 2018-04-20 | 87 | 0d |  | Tim Wilson | 16h |
| 89 | 3.3.11.12 | Add support for logging |  | 2d | 2018-04-23 | 2018-04-24 | 88 | 0d |  | Justin Hulbert | 16h |
| 90 | 3.3.12 | Write SQL scheduler jobs to back up data every 3 months |  | 5d | 2018-04-25 | 2018-05-01 | 89 | 0d |  | Bill T. | 40h |
| 91 | 3.3.13 | Security Module |  | 15d | 2018-05-02 | 2018-05-22 | 90 | 0d |  | Nathan H. | 120h |
| 92 | 3.3.14 | Maintainance & change requests |  | 30d | 2018-05-23 | 2018-07-03 | 91 | 0d |  | Bryan L.; John Eldred; Tim Wilson | 720h |
| 93 | 3.3.15 | Implemenation complete | milestone | 0d | 2018-07-03 | 2018-07-03 | 92 | 0d |  |  |  |

| ID | WBS | Task | Type | Duration | Start | Finish | Predecessors | Total slack | Constraint | Resources | Work |
| --- | --- | --- | --- | --- | --- | --- | --- | --- | --- | --- | --- |
| 94 | 4 | **Testing** |  | 103d | 2018-07-04 | 2018-11-23 |  | 0d |  |  | 1488h |
| 95 | 4.1 | Integration testing |  | 85d | 2018-07-04 | 2018-10-30 | 93 | 0d | finish no earlier than 2018-02-16 | Ben Taylor; Brian Martinez | 1360h |
| 96 | 4.2 | System testing |  | 11d | 2018-10-31 | 2018-11-14 | 95 | 0d | finish no earlier than 2018-03-05 | Tom George | 88h |
| 97 | 4.3 | Regression testing |  | 5d | 2018-11-15 | 2018-11-21 | 96 | 0d |  | Tom George | 40h |
| 98 | 4.4 | User acceptance testing |  | 2d | 2018-11-22 | 2018-11-23 | 97 | 0d |  |  |  |
| 99 | 4.5 | Testing Complete | milestone | 0d | 2018-11-23 | 2018-11-23 | 98 | 0d |  |  |  |
| 100 | 5 | **Deployment** |  | 4d | 2018-11-26 | 2018-11-29 |  | 0d |  |  | 40h |
| 101 | 5.1 | Server |  | 2d | 2018-11-26 | 2018-11-27 | 99 | 0d |  | Dilip Sharma; Karan P. | 32h |
| 102 | 5.2 | Installation |  | 1d | 2018-11-28 | 2018-11-28 | 101 | 0d |  | Neville C. | 8h |
| 103 | 5.3 | Roll out |  | 1d | 2018-11-29 | 2018-11-29 | 102 | 0d |  |  |  |
